# 2016專案

Schedule from MS Project, 2016-01-01 to 2017-06-30, A marks actual dates.

## Calendars

- 標準: Mon-Fri 08:00-12:00, 13:00-17:00; Sat-Sun off.

## Resources

| Resource |
| --- |
| PeterWang |
| SimonLin |
| TimLin |
| PeterWang |

## Schedule

| ID | WBS | Task | Type | Duration | Start | Finish | Predecessors | Complete | Remaining | Total slack | Free slack | Resources | Work | Actual work |
| --- | --- | --- | --- | --- | --- | --- | --- | --- | --- | --- | --- | --- | --- | --- |
| 1 | 1 | **EPH** |  | 260d? | 2016-01-01 A | 2016-12-29 |  | 1% | 257.55d? | 0d |  |  | 15938h | 216h |
| 2 | 1.1 | **2015.r06 電信小額帳單分列專案 -BM** |  | 5d | 2016-03-03 | 2016-03-10 |  |  |  |  |  | PeterWang | 42h |  |
| 3 | 1.1.1 | Cut Over | manual | 1d | 2016-03-09 | 2016-03-09 |  |  |  |  |  | PeterWang [25%] | 2h |  |
| 4 | 1.2 | **2015.r07 EPH OS升版 (T12)** |  | 147d | 2016-06-01 | 2016-12-22 |  |  |  |  |  | SimonLin | 2216h |  |
| 5 | 1.2.1 | SASD | manual | 25d | 2016-06-01 | 2016-07-05 |  |  |  |  |  | SimonLin | 200h |  |
| 6 | 1.2.2 | PGST | manual | 30d | 2016-07-06 | 2016-08-16 | 5 |  |  |  |  | PeterWang | 240h |  |
| 7 | 1.2.3 | SIT | manual | 30d | 2016-08-17 | 2016-09-27 | 6 |  |  |  |  | SimonLin; TimLin | 480h |  |
| 8 | 1.2.4 | Cut Over Prepare | manual | 15d | 2016-09-28 | 2016-10-18 | 7 |  |  |  |  | SimonLin | 120h |  |
| 9 | 1.3 | **2015.r08 EPH 測試環境建立** |  | 5d | 2016-03-07 A | 2016-03-11 |  | 33% | 3.33d |  |  | PeterWang | 856h | 16h |
| 10 | 1.3.1 | **SASD** |  | 48d | 2016-03-07 A | 2016-05-11 |  | 50% | 24d |  |  | TimLin; PeterWang | 800h | 16h |
| 11 | 1.3.1.1 | 程式清單 |  | 1d | 2016-03-07 A | 2016-03-07 A |  | 100% |  |  |  | PeterWang | 8h | 8h |
| 12 | 1.3.1.2 | 測項準備 |  | 1d | 2016-03-07 A | 2016-03-07 A | 11 | 100% |  |  |  | PeterWang | 8h | 8h |
| 13 | 1.3.1.3 | 系統架構圖 | manual | 2d | 2016-03-07 | 2016-03-08 |  |  |  |  |  | TimLin | 16h |  |
| 14 | 1.3.2 | PGST |  | 1d | 2016-03-08 | 2016-03-08 | 12 |  |  | 2d | 0d | PeterWang | 8h |  |
| 15 | 1.3.3 | Cut Over |  | 1d | 2016-03-09 | 2016-03-09 | 14 |  |  | 2d |  | PeterWang | 8h |  |
| 16 | 1.4 | **2015.r10 卡資料加密專案-EPH Temp II (T1+T2)** |  | 70d | 2016-01-01 | 2016-04-07 | 9 |  |  | 0d |  | SimonLin | 2480h |  |
| 17 | 1.4.1 | **EPH DB 加密** |  | 60d | 2016-01-01 | 2016-03-24 |  |  |  |  |  | SimonLin | 600h |  |
| 18 | 1.4.1.1 | SASD | manual | 1d | 2016-03-09 | 2016-03-09 | 11 |  |  |  |  | PeterWang; TimLin | 16h |  |
| 19 | 1.4.1.2 | PGST | manual | 2d | 2016-03-10 | 2016-03-11 | 18 |  |  |  |  | PeterWang | 16h |  |
| 20 | 1.4.1.3 | SIT | manual | 5d | 2016-03-14 | 2016-03-18 | 19 |  |  |  |  | SimonLin | 40h |  |
| 21 | 1.4.1.4 | Cut Over Prepare | manual | 3d | 2016-03-21 | 2016-03-23 |  |  |  |  |  | SimonLin | 24h |  |
| 22 | 1.4.1.5 | Cut Over | manual | 1d | 2016-03-24 | 2016-03-24 |  |  |  |  |  | SimonLin; PeterWang; TimLin | 24h |  |
| 23 | 1.4.2 | **籃框傳輸加密** |  | 70d | 2016-01-01 | 2016-04-07 |  |  |  |  |  | PeterWang; SimonLin | 1320h |  |
| 24 | 1.4.2.1 | PGST | manual | 1d | 2016-03-07 | 2016-03-07 |  |  |  |  |  | PeterWang | 8h |  |
| 25 | 1.4.2.2 | SIT | manual | 19d | 2016-03-07 | 2016-03-31 |  |  |  |  |  | SimonLin | 152h |  |
| 26 | 1.4.2.3 | Cut Over Prepare | manual | 4d | 2016-04-01 | 2016-04-06 |  |  |  |  |  | SimonLin | 32h |  |
| 27 | 1.4.2.4 | Cut Over | manual | 1d | 2016-04-07 | 2016-04-07 |  |  |  |  |  | SimonLin | 8h |  |

Notes:
- 2: Nora 說核決Bug先上
- 5: - AP Server 需求清單與規格 / - AP Server 網路開通 / - AP 部屬整理 / - 評估修改範圍 & ST 計畫與測項 / - SIT 計畫與測項 / - New 系統架構圖
- 9: - 2003 + 2008 + 加密DB 架構圖/ - 2012 + 2008 + 2003 + 加密DB 架構圖
- 10: - 清查所有AP/Scource Code Peter / - 清查所有Test/PROD AP 介接系統Socket IP Port/ HTTP Port/FTP IP Port / - 系統架構圖 & Contact Window
- 11: SD 修正
- 14: -cchs : AAron 開發的SYNCTOCCHSV2 功能同CCHS . / 需與CCHS Todd 確認是否資料有匯入 (2天) / -- 所有AP 接轉移到加密DB 各介接系統測試OK / -- 測項進度
- 18: 1.測試DB環境架構圖/ 2.程式清單&修改範圍 / 3.SIT Plan&Test Case
- 19: 1.修改既有AP 連至加密DB(程式清單) / 2.
- 20: 1.
- 24: 開發壓測AP
- 25: 3/10 提供壓測報告 / 1.CSW 100% / 2.SCMS 50% / 3.579IVR 0% / 4.BP 12.5%

| ID | WBS | Task | Type | Duration | Start | Finish | Predecessors | Resources | Work |
| --- | --- | --- | --- | --- | --- | --- | --- | --- | --- |
| 28 | 1.5 | **2015.r14 FP重新照會** |  | 151d | 2016-03-04 | 2016-09-30 |  | TimLin | 1208h |
| 29 | 1.5.1 | SASD | manual | 1d? | 2016-03-04 | 2016-03-04 |  |  |  |
| 30 | 1.6 | **2015.r15 風管新增『授權碼』詢問機制** |  | 150d | 2016-03-07 | 2016-09-30 |  | TimLin | 1208h |
| 31 | 1.6.1 | SASD - Confirm Pending | manual | 1d | 2016-03-07 | 2016-03-07 |  | TimLin | 8h |
| 32 | 1.7 | **2015.r16 FP系統-新增『12小時到貨』判斷方式** |  | 150d | 2016-03-07 | 2016-09-30 |  | TimLin | 1200h |
| 33 | 1.7.1 | SASD - Confirm Pending | manual | 1d | 2016-03-07 | 2016-03-07 |  |  |  |
| 34 | 1.8 | **2015.r17 系統事件處理流程 + 諮詢** |  | 62d | 2016-03-07 | 2016-05-31 |  | PeterWang | 504h |
| 35 | 1.8.1 | SASD - Confirm GA | manual | 1d | 2016-03-07 | 2016-03-07 |  | PeterWang | 8h |
| 36 | 1.9 | **2015.r18 FP-『短期多人留同一貨址』** |  | 150d | 2016-03-07 | 2016-09-30 |  | TimLin | 1200h |
| 37 | 1.9.1 | SASD - Confirm Pending | manual | 1d | 2016-03-07 | 2016-03-07 |  |  |  |
| 38 | 1.10 | **2015.r19 EPH 專線改接至Fubon (T4)** |  | 54d | 2016-03-01 | 2016-05-13 |  | TimLin | 512h |
| 39 | 1.10.1 | SASD | manual | 9d | 2016-03-07 | 2016-03-17 |  | TimLin | 72h |
| 40 | 1.10.2 | PGST | manual | 1d | 2016-03-20 | 2016-03-20 |  | TimLin | 8h |
| 41 | 1.11 | **2015.r20 3D MyPlay1 請款** |  | 50d | 2016-01-01 | 2016-03-10 |  | TimLin | 432h |
| 42 | 1.11.1 | Cut Over WBS & Plan | manual | 3d | 2016-03-07 | 2016-03-09 |  | TimLin | 24h |
| 43 | 1.11.2 | Cut Over | manual | 1d | 2016-03-10 | 2016-03-10 |  | TimLin | 8h |
| 44 | 1.12 | **2015.r23 EPH579 DB HK 保留6年資料** |  | 14d | 2016-05-16 | 2016-06-02 |  | PeterWang | 152h |
| 45 | 1.12.1 | SASD | manual | 5d | 2016-05-16 | 2016-05-20 |  | PeterWang | 40h |
| 46 | 1.13 | **2015.r24 EPH 拋轉佣金資料自動化** |  | 65d | 2016-01-01 | 2016-03-31 |  | PeterWang | 528h |
| 47 | 1.13.1 | SASD | manual | 1d? | 2016-01-01 | 2016-01-01 |  | PeterWang | 8h |
| 48 | 1.14 | **2015.r25 轉帳代繳NCCC 金額比對修正** |  | 8d | 2016-06-01 | 2016-06-10 |  | PeterWang | 104h |
| 49 | 1.14.1 | PGST | manual | 5d | 2016-06-01 | 2016-06-07 |  | PeterWang | 40h |
| 50 | 1.15 | **2016.r01 NCCC TLS 1.2 (T3)** |  | 92d | 2016-01-04 | 2016-05-10 | 9 | SimonLin | 1120h |
| 51 | 1.15.1 | SASD | manual | 7d | 2016-03-07 | 2016-03-15 |  | SimonLin; TimLin | 112h |
| 52 | 1.15.2 | PGST | manual | 3d | 2016-03-16 | 2016-03-18 |  | PeterWang | 24h |

Notes:
- 39: - 3/8 確定TWM TO FUBON 所有AP Server IP & 防火牆設定/ - 3/11 IT 專線施工 WBS Rollback Plan & Test Item / - 3/11 確定目前TEST PROD 路由可以連接到 FUBON TEST PROD/TEST (FUBON IP?)
- 40: 3/20 富邦維修 TWM IT專線網卡
- 42: - 3/7 提單申請上線 / - 3/8 Cut Over WBS Plan & 通知FrankFu / - 3/9 Confirm WBS
- 45: - Confirm All Table Table Keep Size & HK AP
- 51: - Stunnel 分流可行性分析 / - 工法確認 / - 找通路開會討論工法&時程 / - NCCC Test Server 確認 & 網路開通申請 / - 產出修改範圍文件 / - 產出 AP Server 安裝AP手冊 / - SIT Plan&測項
- 52: - 修改NCCC 線上授權程式 NCCC & NCEC 通路 / - Compiler with Visual Studio 2012 & .NET 4.5/ - 測試卡號進行ST

| ID | WBS | Task | Type | Duration | Start | Finish | Predecessors | Complete | Total slack | Resources | Work | Actual work |
| --- | --- | --- | --- | --- | --- | --- | --- | --- | --- | --- | --- | --- |
| 53 | 1.15.3 | **SIT** |  | 25d | 2016-03-21 | 2016-04-22 |  |  |  | PeterWang | 200h |  |
| 54 | 1.15.3.1 | ALL NCCC 特店測試完成 | milestone, manual | 0d | 2016-04-22 | 2016-04-22 |  |  |  |  |  |  |
| 55 | 1.15.4 | Cut Over Prepare | manual | 6d | 2016-04-25 | 2016-05-02 |  |  |  | SimonLin | 48h |  |
| 56 | 1.16 | **2016.r02 EPH 監控機制** |  | 25d | 2016-02-22 A | 2016-03-25 A |  | 100% |  | PeterWang | 200h | 200h |
| 57 | 1.16.1 | GA | manual | 1d | 2016-02-22 A | 2016-02-22 A |  | 100% |  |  |  |  |
| 58 | 1.17 | 2016.r03 V-Zone-線上繳款(金融/信用卡) 、線上繳款(虛擬帳號)、線上繳款(信用卡請款) 、批次繳款(信用卡)等模組及資料庫搬至V-Zone (T6) | manual | 1d? | 2016-01-01 | 2016-01-01 |  |  |  | SimonLin | 8h |  |
| 59 | 1.18 | 2016.r04 PCIDSS - CSW查詢傳輸卡號改為前六後四 降敏(T7) | manual | 1d? | 2016-01-01 | 2016-01-01 |  |  |  | SimonLin | 8h |  |
| 60 | 1.19 | 2016.r05 FP 照會改由WS 取代Socket (T8) | manual | 1d? | 2016-01-01 | 2016-01-01 |  |  |  | SimonLin | 8h |  |
| 61 | 1.20 | 2016.r06 卡資料加解密, 加解密KEY 由key Server 管理(T9) | manual | 1d? | 2016-01-01 | 2016-01-01 |  |  |  | SimonLin | 8h |  |
| 62 | 1.21 | 2016.r07 收單行資料傳輸改為資料傳輸加密 (T11) | manual | 1d? | 2016-01-01 | 2016-01-01 |  |  |  | SimonLin | 8h |  |
| 63 | 1.22 | **2016.r08 傳輸加密&斡旋(T13)** |  | 120d | 2016-04-18 | 2016-09-30 |  |  | 0d | SimonLin | 1928h |  |
| 64 | 1.22.1 | SASD | manual | 23d | 2016-04-18 | 2016-05-18 |  |  |  | SimonLin | 184h |  |
| 65 | 1.22.2 | PGST | manual | 15d | 2016-05-19 | 2016-06-08 | 64 |  |  | PeterWang | 120h |  |
| 66 | 1.22.3 | SIT | manual | 73d | 2016-06-09 | 2016-09-18 | 65 |  |  | SimonLin | 584h |  |
| 67 | 1.22.4 | Cut Over Prepare | manual | 10d | 2016-09-19 | 2016-09-30 | 66 |  |  | SimonLin | 80h |  |
| 68 | 1.23 | 2016.r02 EPH 後台管理系統 | manual | 1d? | 2016-12-29 | 2016-12-29 |  |  |  | PeterWang | 8h |  |
| 69 | 2 | **CBCS** |  | 345d? | 2016-03-07 | 2017-06-30 |  |  | 0d |  | 1240h |  |
| 70 | 2.1 | 2015.r5 CBCS及富邦更換專線(T5) | manual | 1d | 2016-10-31 | 2016-10-31 |  |  |  | TimLin | 8h |  |
| 71 | 2.2 | 2015.r6 CBCS FTP Server OS 升版2012 | manual | 1d | 2016-12-22 | 2016-12-22 |  |  |  | SimonLin | 8h |  |
| 72 | 2.3 | 2015.r7 CBCS AP Server OS 升版2012 | manual | 1d | 2016-12-22 | 2016-12-22 |  |  |  | SimonLin | 8h |  |
| 73 | 2.4 | 2015.r8 CBCS 信用卡資料加密(T2) | manual | 1d | 2016-11-30 | 2016-11-30 |  |  |  | SimonLin | 8h |  |
| 74 | 2.5 | **2015.r9 GSMBS 轉帳代繳更改提供資料方式(T1)** |  | 61d | 2016-03-07 | 2016-05-30 |  |  |  | SimonLin | 488h |  |
| 75 | 2.5.1 | SASD | manual | 10d | 2016-03-07 | 2016-03-18 |  |  |  |  |  |  |
| 76 | 2.5.2 | PGST | manual | 10d | 2016-03-21 | 2016-04-01 | 75 |  |  |  |  |  |
| 77 | 2.5.3 | SIT | manual | 1d? | 2016-03-07 | 2016-03-07 |  |  |  |  |  |  |
| 78 | 2.6 | 2015.r10 CBCS AP NET 2.0 升版至4.5 | manual | 1d | 2016-12-22 | 2016-12-22 |  |  |  | PeterWang | 8h |  |
| 79 | 2.7 | 2015.r11 CBCS 月報400差異處理 | manual | 1d | 2016-03-07 | 2016-03-07 |  |  |  | TimLin | 8h |  |
| 80 | 2.8 | 2015.r12 CBCS 測試環境的建立 | manual | 5d | 2016-03-07 | 2016-03-11 |  |  |  | PeterWang | 40h |  |

Notes:
- 64: 斡旋機制SIA & SIT Plan & Test Case
- 68: Rossetti 可Pending
- 75: SFTP FTPS / S/W 安裝 / SIA規格
- 80: DB Server OK / 2003 - FTP + AP / 2012 - AR FTP + AP (INTRANET) OK / 2012 - Fubon FTP (DMZ)

| ID | WBS | Task | Type | Duration | Start | Finish | Resources | Work |
| --- | --- | --- | --- | --- | --- | --- | --- | --- |
| 81 | 2.9 | **2016.r01 PCIDSS TEMP II 傳輸加密-降敏 (T3)** |  | 78d | 2016-05-16 | 2016-08-31 | SimonLin | 632h |
| 82 | 2.9.1 | SASD | manual | 1d? | 2016-05-30 | 2016-05-30 | SimonLin | 8h |
| 83 | 2.10 | 2016.r02 V-Zone (T4) | manual | 1d? | 2017-06-30 | 2017-06-30 | SimonLin | 8h |
| 84 | 2.11 | 2016.r03 GSMBS 點數計算改為DBLINK->ODBC (T6) | manual | 1d? | 2016-03-07 | 2016-03-07 | SimonLin | 8h |
| 85 | 2.12 | 2016.r04 AR 減量資料,由原提供所有轉帳代繳-> 僅富邦資料(T7) | manual | 1d? | 2016-03-07 | 2016-03-07 | SimonLin | 8h |
| 86 | 2.13 | 2016.r05 Key Server (T8) | manual | 1d? | 2016-03-07 | 2016-03-07 | SimonLin | 8h |
